# 软件开发

Schedule from MS Project, 2019-05-15 to 2019-09-06.

## Calendars

- 标准: Mon-Fri 08:00-12:00, 13:00-17:00; Sat-Sun off.

## Resources

| Resource |
| --- |
| 管理人员 |
| 项目经理 |
| 分析人员 |
| 开发人员 |
| 测试人员 |
| 培训人员 |
| 技术联络人员 |
| 部署小组 |

## Schedule

| ID | WBS | Task | Duration | Start | Finish | Predecessors | Total slack | Free slack | Constraint | 负责人 |
| --- | --- | --- | --- | --- | --- | --- | --- | --- | --- | --- |
| 1 | 1 | **项目准备** | 9d | 2019-05-15 | 2019-05-27 |  | 19.5d | 0d |  |  |
| 2 | 1.1 | 项目立项 | 4d | 2019-05-15 | 2019-05-20 |  | 8.5d | 0d | finish no earlier than 2019-05-20 | 刘骁 |
| 3 | 1.2 | 项目动员 | 2d | 2019-05-21 | 2019-05-22 | 2 | 11.5d |  |  | 刘骁 |
| 4 | 1.3 | 资金申请 | 2d | 2019-05-21 | 2019-05-22 | 2 | 8.5d | 0d |  | 刘骁 |
| 5 | 1.4 | 硬件设备采购 | 3d | 2019-05-23 | 2019-05-27 | 4 | 8.5d |  |  | 刘骁 |
| 6 | 2 | **软件项目设计** | 5d | 2019-05-28 | 2019-06-03 |  | 19.5d |  |  |  |
| 7 | 2.1 | 开发里程碑确定 | 1d | 2019-05-28 | 2019-05-28 | 1 | 11.5d | 3d |  | 刘骁 |
| 8 | 2.2 | 制定开发计划 | 4d | 2019-05-28 | 2019-05-31 | 1 | 8.5d | 0d |  | 白丰硕 |
| 9 | 2.3 | 制定质量计划 | 2d | 2019-05-28 | 2019-05-29 | 1 | 10.5d | 2d |  | 白丰硕 |
| 10 | 2.4 | 制定发布计划 | 2d | 2019-05-28 | 2019-05-29 | 1 | 10.5d | 2d |  | 刘骁 |
| 11 | 2.5 | 项目设计评审 | 1d | 2019-06-03 | 2019-06-03 | 7, 8, 9, 10 | 8.5d | 0d |  | 刘骁 |
| 12 | 3 | **需求分析** | 7d | 2019-06-04 | 2019-06-12 |  | 19.5d |  |  |  |
| 13 | 3.1 | 需求相关者确认 | 1d | 2019-06-04 | 2019-06-04 | 11 | 8.5d | 0d |  | 马欣宇 |
| 14 | 3.2 | 用户侧需求分析 | 2d | 2019-06-05 | 2019-06-06 | 13 | 10.5d | 2d |  | 刘骁 |
| 15 | 3.3 | 开发用例设计 | 2d | 2019-06-05 | 2019-06-06 | 13 | 10.5d | 2d |  | 刘骁 |
| 16 | 3.4 | 功能需求分析 | 2d | 2019-06-05 | 2019-06-06 | 13 | 10.5d | 2d |  | 刘骁 |
| 17 | 3.5 | 性能需求分析 | 4d | 2019-06-05 | 2019-06-10 | 13 | 8.5d | 0d |  | 刘骁 |
| 18 | 3.6 | 安全需求分析 | 4d | 2019-06-05 | 2019-06-10 | 13 | 8.5d | 0d |  | 刘骁 |
| 19 | 3.7 | 需求评审 | 1d | 2019-06-11 | 2019-06-11 | 18, 14, 15, 16, 17 | 8.5d | 0d |  | 马欣宇 |
| 20 | 3.8 | 编写需求文档 | 1d | 2019-06-12 | 2019-06-12 | 19 | 8.5d | 0d |  | 刘骁 |
| 21 | 4 | **概要设计** | 13d | 2019-06-13 | 2019-07-01 | 20 | 19.5d |  |  |  |
| 22 | 4.1 | 特殊概念确定 | 1d | 2019-06-13 | 2019-06-13 | 20 | 130.5d | 0d |  | 马欣宇 |
| 23 | 4.2 | 开发环境设计 | 2d | 2019-06-14 | 2019-06-17 | 22 | 130.5d | 0d |  | 刘骁 |
| 24 | 4.3 | 测试环境设计 | 2d | 2019-06-14 | 2019-06-17 | 22 | 140.5d |  |  | 刘骁 |
| 25 | 4.4 | 部署环境设计 | 2d | 2019-06-14 | 2019-06-17 | 22 | 140.5d |  |  | 刘骁 |
| 26 | 4.5 | 系统业务层次设计 | 2d | 2019-06-18 | 2019-06-19 | 23 | 138.5d |  |  | 刘骁 |
| 27 | 4.6 | 系统技术架构设计 | 4d | 2019-06-18 | 2019-06-21 | 23 | 136.5d |  |  | 叶绵和 |
| 28 | 4.7 | 系统硬件架构设计 | 4d | 2019-06-18 | 2019-06-21 | 23 | 136.5d |  |  | 叶绵和 |
| 29 | 4.8 | 系统软件架构设计 | 6d | 2019-06-18 | 2019-06-25 | 23 | 130.5d | 0d |  | 叶绵和 |
| 30 | 4.9 | 系统功能设计 | 2d | 2019-06-18 | 2019-06-19 | 23 | 134.5d | 0d |  | 马欣宇 |
| 31 | 4.10 | 接口规约设计 | 4d | 2019-06-26 | 2019-07-01 | 29 | 130.5d |  |  | 叶绵和 |
| 32 | 4.11 | 系统工作流程设计 | 2d | 2019-06-20 | 2019-06-21 | 30 | 136.5d |  |  | 刘骁 |
| 33 | 4.12 | 数据结构设计 | 4d | 2019-06-20 | 2019-06-25 | 30 | 134.5d |  |  | 叶绵和 |
| 34 | 4.13 | 安全设计 | 4d | 2019-06-18 | 2019-06-21 | 23 | 136.5d |  |  | 叶绵和 |
| 35 | 4.14 | 制定代码规范 | 2d | 2019-06-13 | 2019-06-14 | 20 | 8.5d | 0d |  | 叶绵和 |

| ID | WBS | Task | Duration | Start | Finish | Predecessors | Total slack | Free slack | Constraint | 负责人 |
| --- | --- | --- | --- | --- | --- | --- | --- | --- | --- | --- |
| 36 | 5 | **详细设计** | 12d | 2019-06-17 | 2019-07-02 | 35 | 11d |  |  |  |
| 37 | 5.1 | 完成设计概述 | 1d | 2019-06-17 | 2019-06-17 | 35 | 8.5d | 0d | finish no earlier than 2019-06-13 | 马欣宇 |
| 38 | 5.2 | 总体方案确认 | 0.5d | 2019-06-18 | 2019-06-18 | 37 | 8.5d | 0d | finish no earlier than 2019-06-17 | 马欣宇 |
| 39 | 5.3 | 前端UI设计 | 0.5d | 2019-06-18 | 2019-06-18 | 38 | 9d |  | finish no earlier than 2019-06-17 | 马欣宇 |
| 40 | 5.4 | 前端交互设计 | 0.5d | 2019-06-18 | 2019-06-18 | 38 | 9d |  | finish no earlier than 2019-06-17 | 马欣宇 |
| 41 | 5.5 | 登录设计 | 0.5d | 2019-06-19 | 2019-06-19 | 38 | 8d |  | finish no earlier than 2019-06-19 | 马欣宇 |
| 42 | 5.6 | 注册设计 | 0.5d | 2019-06-21 | 2019-06-21 | 38 | 6d |  | finish no earlier than 2019-06-21 | 马欣宇 |
| 43 | 5.7 | 导航功能设计 | 0.5d | 2019-06-21 | 2019-06-21 | 38 | 6d |  | finish no earlier than 2019-06-21 | 马欣宇 |
| 44 | 5.8 | 路况分析功能设计 | 0.5d | 2019-06-25 | 2019-06-25 | 38 | 4d |  | finish no earlier than 2019-06-25 | 马欣宇 |
| 45 | 5.9 | 前端事故预测设计 | 0.5d | 2019-06-19 | 2019-06-19 | 38 | 8d |  | finish no earlier than 2019-06-19 | 马欣宇 |
| 46 | 5.10 | 前端公共API服务设计 | 0.5d | 2019-07-01 | 2019-07-01 | 38 | 11d | 0d | finish no earlier than 2019-07-01 | 马欣宇 |
| 47 | 5.11 | 前端用户中心设计 | 1d | 2019-06-21 | 2019-06-21 | 38 | 6d |  | finish no earlier than 2019-06-21 | 马欣宇 |
| 48 | 5.12 | 身份认证设计 | 0.5d | 2019-06-25 | 2019-06-25 | 38 | 4d |  | finish no earlier than 2019-06-25 | 马欣宇 |
| 49 | 5.13 | 后端导航服务设计 | 0.5d | 2019-06-21 | 2019-06-21 | 38 | 6d |  | finish no earlier than 2019-06-21 | 马欣宇 |
| 50 | 5.14 | 后端路况分析设计 | 0.5d | 2019-06-18 | 2019-06-18 | 38 | 9d |  | finish no earlier than 2019-06-14 | 马欣宇 |
| 51 | 5.15 | 后端事故预测设计 | 0.5d | 2019-06-18 | 2019-06-18 | 38 | 9d |  |  | 马欣宇 |
| 52 | 5.16 | 后端公共API服务设计 | 0.5d | 2019-06-18 | 2019-06-18 | 38 | 9d |  |  | 马欣宇 |
| 53 | 5.17 | 后端内部API服务设计 | 0.5d | 2019-06-18 | 2019-06-18 | 38 | 9d |  |  | 马欣宇 |
| 54 | 5.18 | 后端管理员验证设计 | 0.5d | 2019-06-18 | 2019-06-18 | 38 | 9d |  |  | 马欣宇 |
| 55 | 5.19 | 后端管理员权限设计 | 0.5d | 2019-06-18 | 2019-06-18 | 38 | 9d |  |  | 马欣宇 |
| 56 | 5.20 | 后端管理员操作设计 | 0.5d | 2019-06-18 | 2019-06-18 | 38 | 9d |  |  | 马欣宇 |
| 57 | 5.21 | 大数据存储设计 | 0.5d | 2019-06-18 | 2019-06-18 | 38 | 9d |  |  | 马欣宇 |
| 58 | 5.22 | 大数据分析设计 | 1d | 2019-06-18 | 2019-06-19 | 38 | 8.5d |  |  | 马欣宇 |
| 59 | 5.23 | 大数据预测设计 | 1d | 2019-06-18 | 2019-06-19 | 38 | 8.5d |  |  | 马欣宇 |
| 60 | 5.24 | 大数据数据整合设计 | 1d | 2019-06-18 | 2019-06-19 | 38 | 8.5d |  |  | 马欣宇 |
| 61 | 5.25 | 数据采集功能设计 | 0.5d | 2019-06-18 | 2019-06-18 | 38 | 9d |  |  | 马欣宇 |
| 62 | 5.26 | 硬件数据处理设计 | 0.5d | 2019-06-18 | 2019-06-18 | 38 | 9d |  |  | 马欣宇 |
| 63 | 5.27 | 硬件数据传输设计 | 1d | 2019-06-18 | 2019-06-19 | 38 | 8.5d |  |  | 马欣宇 |
| 64 | 5.28 | 详细设计确认 | 1d | 2019-07-02 | 2019-07-02 | 39, 40, 41, 42, 43, 44, 45, 46, 47, 48, 49, 50, 51, 52, 53, 54, 55, 56, 57, 58, 59, 60, 61, 62, 63 | 11d | 0d |  | 马欣宇 |

| ID | WBS | Task | Duration | Start | Finish | Predecessors | Total slack | Free slack | Constraint | 负责人 |
| --- | --- | --- | --- | --- | --- | --- | --- | --- | --- | --- |
| 65 | 6 | **软件编码** | 17.5d | 2019-07-03 | 2019-07-26 | 64 | 11d |  |  |  |
| 66 | 6.1 | 前端UI编码实现 | 5d | 2019-07-03 | 2019-07-09 | 64 | 29.5d | 0d | finish no earlier than 2019-06-17 | 杨昱昊 |
| 67 | 6.2 | 交互编码实现 | 2d | 2019-07-10 | 2019-07-11 | 66 | 29.5d | 0d | finish no earlier than 2019-06-18 | 杨昱昊 |
| 68 | 6.3 | 登录实现 | 1d | 2019-07-12 | 2019-07-12 | 67 | 29.5d | 0d | finish no earlier than 2019-06-18 | 杨昱昊 |
| 69 | 6.4 | 注册实现 | 0.5d | 2019-07-15 | 2019-07-15 | 68 | 29.5d | 0d | finish no earlier than 2019-06-18 | 杨昱昊 |
| 70 | 6.5 | 导航功能编码实现 | 2d | 2019-07-15 | 2019-07-17 | 69 | 29.5d | 0d | finish no earlier than 2019-06-19 | 杨昱昊 |
| 71 | 6.6 | 路况分析功能编码实现 | 2d | 2019-07-17 | 2019-07-19 | 70 | 29.5d | 0d | finish no earlier than 2019-06-21 | 杨昱昊 |
| 72 | 6.7 | 前端事故预测编码实现 | 2d | 2019-07-19 | 2019-07-23 | 71 | 29.5d | 0d | finish no earlier than 2019-06-21 | 杨昱昊 |
| 73 | 6.8 | 前端公共API服务编码实现 | 2d | 2019-07-23 | 2019-07-25 | 72 | 29.5d | 0d | finish no earlier than 2019-06-25 | 杨昱昊 |
| 74 | 6.9 | 前端用户中心编码实现 | 1d | 2019-07-25 | 2019-07-26 | 73 | 29.5d | 0d | finish no earlier than 2019-06-19 | 杨昱昊 |
| 75 | 6.10 | 身份认证编码实现 | 1d | 2019-07-03 | 2019-07-03 | 64 | 36d | 0d | finish no earlier than 2019-07-01 | 杨志成 |
| 76 | 6.11 | 后端导航服务编码实现 | 2d | 2019-07-04 | 2019-07-05 | 75 | 36d | 0d | finish no earlier than 2019-06-21 | 杨志成 |
| 77 | 6.12 | 后端路况分析编码实现 | 2d | 2019-07-08 | 2019-07-09 | 76 | 36d | 0d | finish no earlier than 2019-06-25 | 杨志成 |
| 78 | 6.13 | 后端事故预测编码实现 | 2d | 2019-07-10 | 2019-07-11 | 77 | 36d | 0d | finish no earlier than 2019-06-21 | 杨志成 |
| 79 | 6.14 | 后端公共API服务编码实现 | 1d | 2019-07-12 | 2019-07-12 | 78 | 36d | 0d | finish no earlier than 2019-06-18 | 杨志成 |
| 80 | 6.15 | 后端内部API服务设计 | 1d | 2019-07-15 | 2019-07-15 | 79 | 36d | 0d | finish no earlier than 2019-06-18 | 杨志成 |
| 81 | 6.16 | 后端管理员验证设计 | 1d | 2019-07-16 | 2019-07-16 | 80 | 36d | 0d | finish no earlier than 2019-06-18 | 杨志成 |
| 82 | 6.17 | 后端管理员权限设计 | 1d | 2019-07-17 | 2019-07-17 | 81 | 36d | 0d | finish no earlier than 2019-06-18 | 杨志成 |
| 83 | 6.18 | 后端管理员操作设计 | 1d | 2019-07-18 | 2019-07-18 | 82 | 36d |  | finish no earlier than 2019-06-18 | 杨志成 |
| 84 | 6.19 | 大数据存储编码实现 | 2d | 2019-07-03 | 2019-07-04 | 64 | 25d | 0d | finish no earlier than 2019-06-18 | 杨志成 |
| 85 | 6.20 | 大数据分析编码实现 | 5d | 2019-07-05 | 2019-07-11 | 84 | 25d | 0d | finish no earlier than 2019-06-18 | 杨志成 |
| 86 | 6.21 | 大数据预测编码实现 | 5d | 2019-07-12 | 2019-07-18 | 85 | 25d | 0d | finish no earlier than 2019-06-18 | 杨志成 |
| 87 | 6.22 | 大数据数据整合编码实现 | 5d | 2019-07-19 | 2019-07-25 | 86 | 25d | 0d | finish no earlier than 2019-06-19 | 杨志成 |
| 88 | 6.23 | 数据采集功能编码实现 | 5d | 2019-07-03 | 2019-07-09 | 64 | 11d | 0d | finish no earlier than 2019-06-19 | 陈泽远 |
| 89 | 6.24 | 硬件数据处理编码实现 | 5d | 2019-07-10 | 2019-07-16 | 88 | 11d | 0d | finish no earlier than 2019-06-19 | 陈泽远 |
| 90 | 6.25 | 硬件数据传输编码实现 | 5d | 2019-07-17 | 2019-07-23 | 89 | 33d |  | finish no earlier than 2019-06-18 | 陈泽远 |

| ID | WBS | Task | Duration | Start | Finish | Predecessors | Total slack | Free slack | Constraint | 负责人 |
| --- | --- | --- | --- | --- | --- | --- | --- | --- | --- | --- |
| 91 | 7 | **单元测试** | 20d | 2019-07-03 | 2019-07-30 |  | 21d |  |  |  |
| 92 | 7.1 | 前端UI单元测试 | 1d | 2019-07-10 | 2019-07-10 | 66 | 42d |  | finish no earlier than 2019-07-03 | 李寒松 |
| 93 | 7.2 | 交互单元测试 | 1d | 2019-07-12 | 2019-07-12 | 67 | 40d |  | finish no earlier than 2019-07-03 | 李寒松 |
| 94 | 7.3 | 登录注册单元测试 | 1d | 2019-07-15 | 2019-07-16 | 69 | 38.5d |  | finish no earlier than 2019-07-03 | 李寒松 |
| 95 | 7.4 | 搜索查询单元测试 | 1d | 2019-07-03 | 2019-07-03 | 64 | 46d | 5d | finish no earlier than 2019-07-03 | 李寒松 |
| 96 | 7.5 | 地图显示单元测试 | 2d | 2019-07-17 | 2019-07-19 | 70 | 34.5d | 0d | finish no earlier than 2019-07-03 | 李寒松 |
| 97 | 7.6 | 定位模块单元测试 | 1d | 2019-07-17 | 2019-07-18 | 70 | 36.5d |  | finish no earlier than 2019-07-03 | 李寒松 |
| 98 | 7.7 | 语音识别功能单元测试 | 2d | 2019-07-17 | 2019-07-19 | 70 | 33.5d | 0d | finish no earlier than 2019-07-03 | 李寒松 |
| 99 | 7.8 | 语音提示功能单元测试 | 2d | 2019-07-17 | 2019-07-19 | 70 | 33.5d | 0d | finish no earlier than 2019-07-03 | 李寒松 |
| 100 | 7.9 | 前端导航单元测试 | 2d | 2019-07-17 | 2019-07-19 | 70 | 35.5d |  | finish no earlier than 2019-07-03 | 李寒松 |
| 101 | 7.10 | 前端路况分析单元测试 | 2d | 2019-07-19 | 2019-07-23 | 71 | 33.5d |  | finish no earlier than 2019-07-03 | 李寒松 |
| 102 | 7.11 | 前端事故预测单元测试 | 2d | 2019-07-23 | 2019-07-25 | 72 | 31.5d |  | finish no earlier than 2019-07-03 | 李寒松 |
| 103 | 7.12 | 前端公共API服务单元测试 | 1d | 2019-07-25 | 2019-07-26 | 73 | 30.5d |  | finish no earlier than 2019-07-03 | 李寒松 |
| 104 | 7.13 | 前端用户中心单元测试 | 1d | 2019-07-26 | 2019-07-29 | 74 | 29.5d |  | finish no earlier than 2019-07-03 | 李寒松 |
| 105 | 7.14 | 前端后台管理单元测试 | 1d | 2019-07-26 | 2019-07-29 | 74 | 29.5d |  | finish no earlier than 2019-07-03 | 李寒松 |
| 106 | 7.15 | 后端身份认证单元测试 | 1d | 2019-07-04 | 2019-07-04 | 75 | 46d |  | finish no earlier than 2019-07-03 | 李寒松 |
| 107 | 7.16 | 后端路径规划单元测试 | 2d | 2019-07-10 | 2019-07-11 | 77 | 41d |  | finish no earlier than 2019-07-03 | 李寒松 |
| 108 | 7.17 | 后端路况分析单元测试 | 2d | 2019-07-10 | 2019-07-11 | 77 | 41d |  | finish no earlier than 2019-07-03 | 李寒松 |
| 109 | 7.18 | 后端事故分析单元测试 | 2d | 2019-07-12 | 2019-07-15 | 78 | 39d |  | finish no earlier than 2019-07-03 | 李寒松 |
| 110 | 7.19 | 后端公共API服务单元测试 | 2d | 2019-07-15 | 2019-07-16 | 79 | 38d |  | finish no earlier than 2019-07-03 | 李寒松 |
| 111 | 7.20 | 后端用户中心单元测试 | 1d | 2019-07-17 | 2019-07-17 | 81 | 37d |  | finish no earlier than 2019-07-04 | 李寒松 |
| 112 | 7.21 | 数据库接口模块单元测试 | 2d | 2019-07-26 | 2019-07-29 | 87 | 29d |  | finish no earlier than 2019-07-03 | 李寒松 |
| 113 | 7.22 | 后台管理单元测试 | 2d | 2019-07-17 | 2019-07-18 | 81 | 36d |  | finish no earlier than 2019-07-03 | 李寒松 |
| 114 | 7.23 | 数据清洗模块单元测试 | 3d | 2019-07-26 | 2019-07-30 | 87 | 28d |  | finish no earlier than 2019-07-03 | 李寒松 |
| 115 | 7.24 | 分析数据存储模块单元测试 | 3d | 2019-07-26 | 2019-07-30 | 87 | 25d | 0d | finish no earlier than 2019-07-03 | 李寒松 |
| 116 | 7.25 | 黑点分析单元测试 | 3d | 2019-07-17 | 2019-07-19 | 89 | 32d | 7d | finish no earlier than 2019-07-03 | 李寒松 |
| 117 | 7.26 | 黑点预测单元测试 | 3d | 2019-07-17 | 2019-07-19 | 89 | 32d | 7d |  | 李寒松 |
| 118 | 7.27 | 数据整合单元测试 | 2d | 2019-07-17 | 2019-07-18 | 89 | 33d | 0d |  | 李寒松 |
| 119 | 7.28 | 数据更新模块单元测试 | 2d | 2019-07-17 | 2019-07-18 | 89 | 36d |  |  | 李寒松，陈泽远 |
| 120 | 7.29 | 数据采集模块单元测试 | 3d | 2019-07-17 | 2019-07-19 | 89 | 11d | 0d |  | 李寒松，陈泽远 |
| 121 | 7.30 | 数据传输接口单元测试 | 3d | 2019-07-17 | 2019-07-19 | 89 | 35d |  |  | 李寒松，陈泽远 |
| 122 | 7.31 | 数据预处理模块单元测试 | 3d | 2019-07-17 | 2019-07-19 | 89 | 35d |  |  | 李寒松，陈泽远 |
| 123 | 7.32 | 数据回传模块单元测试 | 2d | 2019-07-17 | 2019-07-18 | 89 | 36d |  |  | 李寒松，陈泽远 |
| 124 | 7.33 | 数据接收模块单元测试 | 2d | 2019-07-17 | 2019-07-18 | 89 | 36d |  |  | 李寒松，陈泽远 |

| ID | WBS | Task | Duration | Start | Finish | Predecessors | Total slack | Free slack | Constraint | 负责人 |
| --- | --- | --- | --- | --- | --- | --- | --- | --- | --- | --- |
| 125 | 8 | **集成测试** | 17d | 2019-07-11 | 2019-08-02 |  | 18d |  |  |  |
| 126 | 8.1 | 数据采集系统集成测试 | 3d | 2019-07-22 | 2019-07-24 | 120 | 32d |  | finish no earlier than 2019-07-11 | 李寒松 |
| 127 | 8.2 | 大数据系统与数据采集集成测试 | 2d | 2019-07-31 | 2019-08-01 | 115, 116, 117, 118 | 26d |  | finish no earlier than 2019-07-11 | 李寒松 |
| 128 | 8.3 | 大数据系统节点集成测试 | 3d | 2019-07-31 | 2019-08-02 | 115, 116, 117, 118 | 25d |  | finish no earlier than 2019-07-11 | 李寒松 |
| 129 | 8.4 | 后台与大数据系统集成测试 | 2d | 2019-07-19 | 2019-07-22 | 118 | 34d |  | finish no earlier than 2019-07-11 | 李寒松 |
| 130 | 8.5 | 核心业务集成测试：搜索查询前后端集成测试（客户Web端） | 1d | 2019-07-12 | 2019-07-12 | 95 | 40d |  | finish no earlier than 2019-07-12 | 李寒松 |
| 131 | 8.6 | 核心业务集成测试：搜索查询前后端集成测试（客户Android 端） | 1d | 2019-07-11 | 2019-07-11 | 95 | 41d |  | finish no earlier than 2019-07-11 | 李寒松 |
| 132 | 8.7 | 核心业务集成测试：搜索查询前后端集成测试（客户IOS端） | 1d | 2019-07-12 | 2019-07-12 | 95 | 40d |  | finish no earlier than 2019-07-12 | 李寒松 |
| 133 | 8.8 | 核心业务集成测试：搜索查询前后端集成测试（管理员Web端） | 1d | 2019-07-12 | 2019-07-12 | 95 | 40d |  | finish no earlier than 2019-07-12 | 李寒松 |
| 134 | 8.9 | 核心业务集成测试：地图显示前后端集成测试（客户Web端） | 1d | 2019-07-19 | 2019-07-22 | 96 | 34.5d |  | finish no earlier than 2019-07-12 | 李寒松 |
| 135 | 8.10 | 核心业务集成测试：地图显示前后端集成测试（客户Android 端） | 1d | 2019-07-19 | 2019-07-22 | 96 | 34.5d |  | finish no earlier than 2019-07-12 | 李寒松 |
| 136 | 8.11 | 核心业务集成测试：地图显示前后端集成测试（客户IOS端） | 1d | 2019-07-19 | 2019-07-22 | 96 | 34.5d |  | finish no earlier than 2019-07-12 | 李寒松 |
| 137 | 8.12 | 核心业务集成测试：地图显示前后端集成测试（管理员Web端） | 1d | 2019-07-19 | 2019-07-22 | 96 | 34.5d |  | finish no earlier than 2019-07-11 | 李寒松 |
| 138 | 8.13 | 非核心业务前端与后台集成测试（客户WEB端） | 2d | 2019-07-19 | 2019-07-23 | 98, 99 | 33.5d |  | finish no earlier than 2019-07-11 | 李寒松 |
| 139 | 8.14 | 非核心业务前端与后台集成测试（客户Android端） | 2d | 2019-07-19 | 2019-07-23 | 98, 99 | 33.5d |  | finish no earlier than 2019-07-11 | 李寒松 |
| 140 | 8.15 | 非核心业务前端与后台集成测试（客户IOS端） | 2d | 2019-07-19 | 2019-07-23 | 98, 99 | 33.5d |  | finish no earlier than 2019-07-11 | 李寒松 |
| 141 | 8.16 | 非核心业务前端与后台集成测试（管理员WEB端） | 2d | 2019-07-19 | 2019-07-23 | 98, 99 | 33.5d |  | finish no earlier than 2019-07-12 | 李寒松 |
| 142 | 8.17 | 数据采集系统，大数据平台，后台集成测试 | 2d | 2019-07-22 | 2019-07-23 | 120 | 33d |  | finish no earlier than 2019-07-12 | 李寒松 |
| 143 | 8.18 | 大数据平台，后台，前端（客户Web端） | 2d | 2019-07-22 | 2019-07-23 | 120 | 33d |  | finish no earlier than 2019-07-12 | 李寒松 |
| 144 | 8.19 | 大数据平台，后端，前端（客户Android Q端） | 2d | 2019-07-22 | 2019-07-23 | 120 | 33d |  | finish no earlier than 2019-07-12 | 李寒松 |
| 145 | 8.20 | 大数据平台，后端，前端（客户IOS端） | 2d | 2019-07-22 | 2019-07-23 | 120 | 33d |  | finish no earlier than 2019-07-11 | 李寒松 |
| 146 | 8.21 | 大数据平台，后端，前端（管理员Web端） | 2d | 2019-07-22 | 2019-07-23 | 120 | 33d |  | finish no earlier than 2019-07-12 | 李寒松 |
| 147 | 8.22 | 数据采集，大数据平台，后台，前端（客户Web端） | 2d | 2019-07-22 | 2019-07-23 | 120 | 33d |  | finish no earlier than 2019-07-12 | 李寒松 |
| 148 | 8.23 | 数据采集，大数据平台，后台，前端（客户Android 端） | 2d | 2019-07-22 | 2019-07-23 | 120 | 33d |  | finish no earlier than 2019-07-15 | 李寒松 |
| 149 | 8.24 | 数据采集，大数据平台，后台，前端（客户IOS端） | 2d | 2019-07-22 | 2019-07-23 | 120 | 33d |  | finish no earlier than 2019-07-15 | 李寒松 |
| 150 | 8.25 | 数据采集，大数据平台，后台，前端（管理员Web端）采集 | 2d | 2019-07-22 | 2019-07-23 | 120 | 11d | 0d | finish no earlier than 2019-07-15 | 李寒松 |

| ID | WBS | Task | Duration | Start | Finish | Predecessors | Total slack | Free slack | Constraint | 负责人 |
| --- | --- | --- | --- | --- | --- | --- | --- | --- | --- | --- |
| 151 | 9 | **系统测试** | 14d | 2019-07-24 | 2019-08-12 |  | 11d |  |  |  |
| 152 | 9.1 | 系统测试：功能测试 | 2d | 2019-07-24 | 2019-07-25 | 150 | 31d |  | finish no earlier than 2019-07-18 | 李寒松 |
| 153 | 9.2 | 系统测试：兼容性测试 | 2d | 2019-07-24 | 2019-07-25 | 150 | 31d |  | finish no earlier than 2019-07-22 | 白丰硕 |
| 154 | 9.3 | 系统测试：部署测试 | 2d | 2019-07-24 | 2019-07-25 | 150 | 31d |  | finish no earlier than 2019-07-25 | 叶绵和 |
| 155 | 9.4 | 系统测试：安全测试 | 2d | 2019-07-24 | 2019-07-25 | 150 | 31d |  | start no earlier than 2019-07-24 | 陈泽远 |
| 156 | 9.5 | 系统测试：性能测试 | 2d | 2019-07-24 | 2019-07-25 | 150 | 31d |  | start no earlier than 2019-07-24 | 杨志成 |
| 157 | 9.6 | 系统测试：压力测试 | 2d | 2019-07-26 | 2019-07-29 | 150 | 29d |  | start no earlier than 2019-07-26 | 杨志成 |
| 158 | 9.7 | 系统测试：恢复测试 | 2d | 2019-07-26 | 2019-07-29 | 150 | 29d |  | start no earlier than 2019-07-26 | 李寒松 |
| 159 | 9.8 | 系统测试：协议一致性测试 | 1d | 2019-07-26 | 2019-07-26 | 150 | 30d |  | start no earlier than 2019-07-26 | 白丰硕 |
| 160 | 9.9 | 系统测试：容量测试 | 1d | 2019-07-30 | 2019-07-30 | 150 | 28d |  | start no earlier than 2019-07-30 | 李寒松 |
| 161 | 9.10 | 系统测试：失效恢复测试 | 1d | 2019-07-31 | 2019-07-31 | 150 | 27d |  | start no earlier than 2019-07-31 | 李寒松 |
| 162 | 9.11 | 系统测试：GUI测试 | 1d | 2019-08-07 | 2019-08-07 | 150 | 22d |  | finish no earlier than 2019-08-07 | 杨昱昊 |
| 163 | 9.12 | 系统测试：健壮性测试 | 1d | 2019-08-01 | 2019-08-01 | 150 | 26d |  | start no earlier than 2019-08-01 | 李寒松 |
| 164 | 9.13 | 系统测试：易用性测试 | 1d | 2019-07-24 | 2019-07-24 | 150 | 32d |  | start no earlier than 2019-07-24 | 马欣宇 |
| 165 | 9.14 | 系统测试：安装测试 | 1d | 2019-07-25 | 2019-07-25 | 150 | 31d |  | start no earlier than 2019-07-25 | 马欣宇 |
| 166 | 9.15 | 系统测试：文档测试 | 1d | 2019-07-29 | 2019-07-29 | 150 | 29d |  | start no earlier than 2019-07-29 | 白丰硕 |
| 167 | 9.16 | 系统测试：在线帮助测试 | 1d | 2019-07-30 | 2019-07-30 | 150 | 28d |  | start no earlier than 2019-07-30 | 白丰硕 |
| 168 | 9.17 | 系统测试：数据转换测试 | 1d | 2019-08-02 | 2019-08-02 | 150 | 25d |  | start no earlier than 2019-08-02 | 李寒松 |
| 169 | 9.18 | 系统测试：Alpha和Beta测试 | 3d | 2019-08-05 | 2019-08-07 | 150 | 22d |  | start no earlier than 2019-08-05 | 李寒松 |
| 170 | 9.19 | 系统测试：验收测试 | 3d | 2019-07-26 | 2019-07-30 | 150 | 28d |  | start no earlier than 2019-07-26 | 马欣宇 |
| 171 | 9.20 | 系统测试：回归测试 | 3d | 2019-08-08 | 2019-08-12 | 150 | 0d |  | start no earlier than 2019-08-08 | 李寒松 |
| 172 | 10 | **验收测试** | 19d | 2019-08-13 | 2019-09-06 | 171 | 0d |  |  |  |
| 173 | 10.1 | 功能测试等价类划分 | 1d | 2019-08-13 | 2019-08-13 | 171 | 0d |  | finish no earlier than 2019-07-11 | 李寒松 |
| 174 | 10.2 | 功能测试边界值分析 | 1d | 2019-08-14 | 2019-08-14 | 173 | 0d |  | finish no earlier than 2019-07-11 | 李寒松 |
| 175 | 10.3 | 功能测试错误推测 | 1d | 2019-08-15 | 2019-08-15 | 174 | 0d |  | finish no earlier than 2019-07-11 | 李寒松 |
| 176 | 10.4 | 功能测试因果图 | 1d | 2019-08-16 | 2019-08-16 | 175 | 0d |  | finish no earlier than 2019-07-11 | 李寒松 |
| 177 | 10.5 | 功能测试判定表驱动分析 | 1d | 2019-08-19 | 2019-08-19 | 176 | 0d |  | finish no earlier than 2019-07-12 | 李寒松 |
| 178 | 10.6 | 功能测试正交实验设计 | 1d | 2019-08-20 | 2019-08-20 | 177 | 0d |  | finish no earlier than 2019-07-11 | 李寒松 |
| 179 | 10.7 | 功能测试功能图分析 | 1d | 2019-08-21 | 2019-08-21 | 178 | 0d |  | finish no earlier than 2019-07-12 | 李寒松 |
| 180 | 10.8 | 稳定性测试边缘测试 | 1d | 2019-08-13 | 2019-08-13 | 171 | 17d | 0d | finish no earlier than 2019-07-12 | 杨昱昊 |
| 181 | 10.9 | 稳定性测试压力测试 | 1d | 2019-08-14 | 2019-08-14 | 180 | 17d |  | finish no earlier than 2019-07-12 | 杨昱昊 |
| 182 | 10.10 | 稳定性测试错误值测试 | 1d | 2019-08-13 | 2019-08-13 | 171 | 11d | 0d | finish no earlier than 2019-07-12 | 杨志成 |
| 183 | 10.11 | 稳定性测试交互测试 | 1d | 2019-08-14 | 2019-08-14 | 182 | 11d | 0d | finish no earlier than 2019-07-12 | 杨志成 |
| 184 | 10.12 | 稳定性测试中断测试 | 1d | 2019-08-22 | 2019-08-22 | 179 | 0d |  | finish no earlier than 2019-07-11 | 李寒松 |
| 185 | 10.13 | 硬件之间接口的测试 | 1d | 2019-08-13 | 2019-08-13 | 171 | 17d | 0d | finish no earlier than 2019-07-11 | 陈泽远 |
| 186 | 10.14 | 硬件与后端之间接口的测试 | 1d | 2019-08-14 | 2019-08-14 | 185 | 17d |  | finish no earlier than 2019-07-11 | 陈泽远 |
| 187 | 10.15 | 后端与前端之间接口的测试 | 1d | 2019-08-15 | 2019-08-15 | 183 | 11d | 0d | finish no earlier than 2019-07-11 | 杨志成 |
| 188 | 10.16 | 不同操作系统的兼容性测试 | 1d | 2019-08-13 | 2019-08-13 | 171 | 16d | 0d | finish no earlier than 2019-07-12 | 叶绵和 |
| 189 | 10.17 | 不同软件相互影响的兼容性测试 | 1d | 2019-08-14 | 2019-08-14 | 188 | 16d | 0d | finish no earlier than 2019-07-12 | 叶绵和 |
| 190 | 10.18 | 软件和硬件之间配合的兼容性测试 | 1d | 2019-08-15 | 2019-08-15 | 189 | 16d |  | finish no earlier than 2019-07-12 | 陈泽远 |
| 191 | 10.19 | 性能测试负载测试 | 1d | 2019-08-16 | 2019-08-16 | 187 | 11d | 0d | finish no earlier than 2019-07-12 | 杨志成 |
| 192 | 10.20 | 性能测试强度测试 | 1d | 2019-08-19 | 2019-08-19 | 191 | 11d | 0d | finish no earlier than 2019-07-11 | 杨志成 |
| 193 | 10.21 | 性能测试容量测试 | 1d | 2019-08-20 | 2019-08-20 | 192 | 11d | 0d | finish no earlier than 2019-07-12 | 杨志成 |
| 194 | 10.22 | 性能测试性能评价 | 1d | 2019-08-21 | 2019-08-21 | 193 | 11d | 0d | finish no earlier than 2019-07-12 | 杨志成 |
| 195 | 10.23 | 性能测试性能分析 | 1d | 2019-08-22 | 2019-08-22 | 194 | 11d |  | finish no earlier than 2019-07-15 | 杨志成 |
| 196 | 10.24 | 安全测试代码静态分析 | 1d | 2019-08-23 | 2019-08-23 | 184 | 0d |  | finish no earlier than 2019-07-15 | 李寒松 |
| 197 | 10.25 | 安全测试动态程序分析 | 1d | 2019-08-26 | 2019-08-26 | 196 | 0d |  | finish no earlier than 2019-07-15 | 李寒松 |
| 198 | 10.26 | 安全测试模糊测试 | 1d | 2019-08-27 | 2019-08-27 | 197 | 0d |  | finish no earlier than 2019-07-15 | 李寒松 |
| 199 | 10.27 | 安全测试威胁模型和攻击面分析 | 1d | 2019-08-28 | 2019-08-28 | 198 | 0d |  | finish no earlier than 2019-07-12 | 李寒松 |
| 200 | 10.28 | 制定安全响应计划 | 2d | 2019-08-29 | 2019-08-30 | 199 | 0d |  | finish no earlier than 2019-07-12 | 李寒松 |
| 201 | 10.29 | 易用性测试需求分析方法 | 1d | 2019-08-13 | 2019-08-13 | 171 | 17d | 0d | finish no earlier than 2019-07-15 | 马欣宇 |
| 202 | 10.30 | 易用性测试规范检查 | 1d | 2019-08-13 | 2019-08-13 | 171 | 11d | 0d | finish no earlier than 2019-07-15 | 白丰硕 |
| 203 | 10.31 | 易用性测试用户调查 | 1d | 2019-08-14 | 2019-08-14 | 201 | 17d |  | finish no earlier than 2019-07-15 | 马欣宇 |
| 204 | 10.32 | 易用性测试焦点小组 | 1d | 2019-08-14 | 2019-08-14 | 202 | 11d | 0d | finish no earlier than 2019-07-12 | 白丰硕 |
| 205 | 10.33 | 易用性测试启发性评估 | 1d | 2019-08-15 | 2019-08-15 | 204 | 11d | 0d | finish no earlier than 2019-07-12 | 白丰硕 |
| 206 | 10.34 | 易用性测试实验室测试 | 1d | 2019-09-02 | 2019-09-02 | 200 | 0d |  |  | 李寒松 |
| 207 | 10.35 | 可维护性测试 | 2d | 2019-09-03 | 2019-09-04 | 206 | 0d |  |  | 李寒松 |
| 208 | 10.36 | 可扩充性测试 | 2d | 2019-09-05 | 2019-09-06 | 207 | 0d |  |  | 李寒松 |
| 209 | 10.37 | 用户文档检查 | 5d | 2019-08-16 | 2019-08-22 | 205 | 11d |  |  | 白丰硕 |
